# P1-AriasMartinez-RuzNieto

How a schedule from MS Project changed from version to version. A marks actual dates.

## Version 1 (saved 2022-03-23, file P1-AriasMartinez-RuzNieto.mpp)

Note of the change: P1

| ID | WBS | Task | Duration | Start | Finish | Predecessors | Total float |
| --- | --- | --- | --- | --- | --- | --- | --- |
| 1 | 1 | **Proyecto tienda web** | 127d | 2022-04-25 | 2022-10-19 |  | 0d |
| 2 | 1.1 | **Dirección del proyecto** | 127d | 2022-04-25 | 2022-10-19 |  | 0d |
| 3 |  | Dirigir proyecto | 127d | 2022-04-25 | 2022-10-19 | 59FF | 0d |
| 4 | 1.2 | **Requisitos del Sistema** | 13d | 2022-04-25 | 2022-05-11 |  | 8.25d |
| 5 |  | Identificar los requisitos del negocio | 4d | 2022-04-25 | 2022-04-28 |  | 8.25d |
| 6 |  | Diseñar el flujo de procesos de negocio | 2d | 2022-04-29 | 2022-05-02 | 5 | 8.25d |
| 7 |  | Finalizar los requisitos técnicos | 6d | 2022-04-25 | 2022-05-02 |  | 8.25d |
| 8 |  | Definir los requisitos operativos | 5d | 2022-05-03 | 2022-05-09 | 6, 7 | 8.25d |
| 9 |  | Determinar las necesidades de infraestructura técnica | 2d | 2022-05-10 | 2022-05-11 | 7, 8 | 13.8d |
| 10 | 1.3 | **Requisitos de Software** | 16d | 2022-05-10 | 2022-05-31 |  | 8.25d |
| 11 | 1.3.1 | **Crear requisitos Funcionales** | 16d | 2022-05-10 | 2022-05-31 | 5, 6, 8 | 8.25d |
| 12 |  | Captura del perfil del cliente | 4d | 2022-05-10 | 2022-05-13 |  | 13.25d |
| 13 |  | Vista y búsqueda del catálogo de productos | 6d | 2022-05-10 | 2022-05-17 |  | 8.25d |
| 14 |  | Carro de compra | 3d | 2022-05-18 | 2022-05-20 | 13 | 8.25d |
| 15 |  | Pago electrónico | 6d | 2022-05-10 | 2022-05-17 |  | 11.25d |
| 16 |  | Toma del pedido | 4d | 2022-05-23 | 2022-05-26 | 12, 13, 14, 15 | 8.25d |
| 17 |  | Comprobar historial del pedido | 3d | 2022-05-27 | 2022-05-31 | 16 | 8.25d |
| 18 |  | Requisitos de datos | 3d | 2022-05-18 | 2022-05-20 | 12, 13 | 15.25d |
| 19 |  | Requisitos de la interfaz del ERP | 7d | 2022-05-23 | 2022-05-31 | 16SS | 8.25d |
| 20 |  | Requisitos de la Interfaz de Usuario | 4d | 2022-05-10 | 2022-05-13 | 11SS | 20.25d |
| 21 | 1.4 | **Diseño detallado** | 19.75d | 2022-06-01 | 2022-06-29 | 10 | 8.25d |
| 22 |  | Diseño de la captura del perfil del cliente | 6.75d | 2022-06-01 | 2022-06-09 |  | 11.25d |
| 23 |  | Diseño de la vista y búsqueda del catálogo de productos | 6.75d | 2022-06-01 | 2022-06-09 |  | 8.25d |
| 24 |  | Diseño del carro de compra | 3d | 2022-06-09 | 2022-06-14 | 23 | 8.25d |
| 25 |  | Diseño del pago electrónico | 3d | 2022-06-01 | 2022-06-03 |  | 15d |
| 26 |  | Diseño de la toma del pedido | 8d | 2022-06-14 | 2022-06-27 | 22, 23, 24, 25 | 8.25d |
| 27 |  | Diseño de comprobación historial del pedido | 2d | 2022-06-27 | 2022-06-29 | 26 | 8.25d |
| 28 |  | Diseño lógico y físico del modelo de datos | 9d | 2022-06-01 | 2022-06-13 |  | 19d |
| 29 |  | Diseño de la interfaz del ERP | 10d | 2022-06-14 | 2022-06-29 | 22, 23, 24, 25 | 8.25d |
| 30 | 1.5 | **Plan de pruebas** | 40.75d | 2022-06-01 | 2022-07-28 |  | 8.25d |
| 31 |  | Establecer los requisitos de las pruebas | 7d | 2022-06-01 | 2022-06-09 | 11 | 21d |
| 32 |  | Crear el plan y los casos de prueba | 10d | 2022-06-29 | 2022-07-13 | 21, 31 | 8.25d |
| 33 |  | Escribir los códigos de pruebas | 11d | 2022-07-13 | 2022-07-28 | 32 | 8.25d |
| 34 | 1.6 | **Infraestructura técnica** | 113.2d | 2022-04-25 | 2022-09-30 |  | 13.8d |
| 35 |  | Crear el entorno de desarrollo | 20d | 2022-05-12 | 2022-06-08 | 9 | 13.8d |
| 36 |  | Crear el entorno de pruebas | 34.2d | 2022-06-09 | 2022-07-28 | 35 | 13.8d |
| 37 |  | Soporte del entorno de desarrollo | 3.8d | 2022-06-09 | 2022-06-14 | 35 | 90.2d |
| 38 |  | Soporte del entorno de desarrollo y pruebas | 46d | 2022-07-28 | 2022-09-30 | 36 | 13.8d |
| 39 |  | Soporte de bases de datos | 4.6d | 2022-04-25 | 2022-04-29 |  | 122.4d |
| 40 | 1.7 | **Desarrollo y prueba de componentes** | 36.75d | 2022-06-09 | 2022-08-01 | 35 | 37d |
| 41 |  | Construir la captura del perfil del cliente | 13d | 2022-06-09 | 2022-06-29 | 22 | 42.25d |
| 42 |  | Construir la vista y búsqueda del catálogo de productos | 12d | 2022-06-09 | 2022-06-28 | 23 | 36.25d |
| 43 |  | Construir el carro de compra | 7d | 2022-06-28 | 2022-07-07 | 24, 42 | 36.25d |
| 44 |  | Construir el pago electrónico | 6d | 2022-06-09 | 2022-06-16 | 25 | 50d |
| 45 |  | Construir la toma del pedido | 12d | 2022-07-07 | 2022-07-25 | 26, 41, 42, 43, 44 | 36.25d |
| 46 |  | Construir la comprobación historial del pedido | 6d | 2022-06-29 | 2022-07-07 | 27 | 48.25d |
| 47 |  | Construir el modelo de datos lógico y físico | 15.5d | 2022-06-14 | 2022-07-06 | 28 | 49.5d |
| 48 |  | Construir la interfaz del ERP | 18d | 2022-06-29 | 2022-07-25 | 29 | 36.25d |
| 49 |  | Soporte de desarrollo y de las pruebas | 23d | 2022-06-29 | 2022-08-01 | 21 | 57.25d |
| 50 | 1.8 | **Pruebas** | 63.75d | 2022-06-09 | 2022-09-08 |  | 8.25d |
| 51 |  | Ejecutar pruebas de montaje | 0d | 2022-06-09 | 2022-06-09 | 31 | 42d |
| 52 |  | Ejecutar pruebas de fase 1 | 12d | 2022-07-07 | 2022-07-25 | 41, 42, 43 | 36.25d |
| 53 |  | Ejecutar pruebas de fase 2 | 5d | 2022-07-25 | 2022-08-01 | 44, 45, 46, 47, 48, 52 | 36.25d |
| 54 |  | Ejecutar pruebas del sistema | 20d | 2022-07-28 | 2022-08-25 | 32, 33, 51 | 8.25d |
| 55 |  | Validar las pruebas | 10d | 2022-08-25 | 2022-09-08 | 54 | 8.25d |
| 56 | 1.9 | **Despliegue** | 21d | 2022-09-08 | 2022-10-07 | 50 | 8.25d |
| 57 |  | Implantación | 10d | 2022-09-08 | 2022-09-22 |  | 8.25d |
| 58 |  | Despliegue a producción | 1d | 2022-09-22 | 2022-09-23 | 57 | 8.25d |
| 59 |  | Revisión del proyecto | 10d | 2022-09-23 | 2022-10-07 | 58 | 8.25d |

## Version 2 (saved 2022-03-23, file P1-AriasMartinez-RuzNieto.mpp)

Note of the change: Update P1-AriasMartinez-RuzNieto.mpp

Last finish stays 2022-10-19.

Changed:

| ID | Task | Start | Finish | Duration | Total float |
| --- | --- | --- | --- | --- | --- |
| 50 | **Pruebas** | 2022-06-09 → 2022-07-07 (+28d) | 2022-09-08 → 2022-09-12 (+4d) | 63.75d → 47d | 8.25d → 6.25d |
| 51 | **Ejecutar pruebas de montaje** | 2022-06-09 → 2022-07-07 (+28d) | 2022-06-09 → 2022-08-01 (+53d) | 0d → 17d | 42d → 6.25d |
| 54 | Ejecutar pruebas del sistema | 2022-07-28 → 2022-08-01 (+4d) | 2022-08-25 → 2022-08-29 (+4d) |  | 8.25d → 6.25d |
| 55 | Validar las pruebas | 2022-08-25 → 2022-08-29 (+4d) | 2022-09-08 → 2022-09-12 (+4d) |  | 8.25d → 6.25d |
| 56 | **Despliegue** | 2022-09-08 → 2022-09-12 (+4d) | 2022-10-07 → 2022-10-11 (+4d) |  | 8.25d → 6.25d |
| 57 | Implantación | 2022-09-08 → 2022-09-12 (+4d) | 2022-09-22 → 2022-09-26 (+4d) |  | 8.25d → 6.25d |
| 58 | Despliegue a producción | 2022-09-22 → 2022-09-26 (+4d) | 2022-09-23 → 2022-09-27 (+4d) |  | 8.25d → 6.25d |
| 59 | Revisión del proyecto | 2022-09-23 → 2022-09-27 (+4d) | 2022-10-07 → 2022-10-11 (+4d) |  | 8.25d → 6.25d |

## Version 3 (saved 2022-03-30, file P2-AriasMartinez-RuzNieto.mpp)

Note of the change: Merge branch 'main' of git@github.com:ARNTM/Todo_MUIT.git

Last finish 2022-10-19 → 2022-10-27 (+8d). Complete tasks 0 → 3.

Changed:

| ID | Task | Start | Finish | Duration | Complete | Total float | Predecessors | Other |
| --- | --- | --- | --- | --- | --- | --- | --- | --- |
| 1 | **Proyecto tienda web** | 2022-04-25 A | 2022-10-19 → 2022-10-27 (+8d) | 127d → 132.89d | 0% → 2% |  |  | baseline start none → 2022-04-25; baseline finish none → 2022-10-27 |
| 2 | **Dirección del proyecto** | 2022-04-25 → 2022-06-09 (+45d) | 2022-10-19 → 2022-10-27 (+8d) | 127d → 100d |  |  |  | baseline start none → 2022-06-09; baseline finish none → 2022-10-27 |
| 3 | Dirigir proyecto | 2022-04-25 → 2022-06-09 (+45d) | 2022-10-19 → 2022-10-27 (+8d) | 127d → 100d |  |  |  | baseline start none → 2022-06-09; baseline finish none → 2022-10-27 |
| 4 | **Requisitos del Sistema** | 2022-04-25 A | 2022-05-11 → 2022-05-12 (+1d) |  | 0% → 63% | 6.25d → 4.75d |  | baseline start none → 2022-04-25; baseline finish none → 2022-05-12 |
| 5 | Identificar los requisitos del negocio | 2022-04-25 A | 2022-04-28 A |  | 0% → 100% | 6.25d → none |  | baseline start none → 2022-04-25; baseline finish none → 2022-04-28 |
| 6 | Diseñar el flujo de procesos de negocio | 2022-04-29 A | 2022-05-02 → 2022-05-03 A (+1d) |  | 0% → 100% | 6.25d → none |  | baseline start none → 2022-04-29; baseline finish none → 2022-05-03 |
| 7 | Finalizar los requisitos técnicos | 2022-04-25 A | 2022-05-02 → 2022-05-03 A (+1d) |  | 0% → 100% | 6.25d → none |  | baseline start none → 2022-04-25; baseline finish none → 2022-05-03 |
| 8 | Definir los requisitos operativos | 2022-05-03 → 2022-05-04 (+1d) | 2022-05-09 → 2022-05-10 (+1d) |  |  | 6.25d → 0d |  | baseline start none → 2022-05-04; baseline finish none → 2022-05-10 |
| 9 | Determinar las necesidades de infraestructura técnica | 2022-05-10 → 2022-05-11 (+1d) | 2022-05-11 → 2022-05-12 (+1d) |  |  | 13.8d → 4.75d |  | baseline start none → 2022-05-11; baseline finish none → 2022-05-12 |
| 10 | **Requisitos de Software** | 2022-05-10 → 2022-05-11 (+1d) | 2022-05-31 → 2022-06-07 (+7d) | 16d → 20d |  | 6.25d → 0d |  | baseline start none → 2022-05-11; baseline finish none → 2022-06-07 |
| 11 | **Crear requisitos Funcionales** | 2022-05-10 → 2022-05-11 (+1d) | 2022-05-31 → 2022-06-07 (+7d) | 16d → 20d |  | 6.25d → 0d |  | baseline start none → 2022-05-11; baseline finish none → 2022-06-07 |
| 12 | Captura del perfil del cliente | 2022-05-10 → 2022-05-19 (+9d) | 2022-05-13 → 2022-05-24 (+11d) |  |  | 13.25d → 3d |  | baseline start none → 2022-05-19; baseline finish none → 2022-05-24 |
| 13 | Vista y búsqueda del catálogo de productos | 2022-05-10 → 2022-05-11 (+1d) | 2022-05-17 → 2022-05-18 (+1d) |  |  | 6.25d → 0d |  | baseline start none → 2022-05-11; baseline finish none → 2022-05-18 |
| 14 | Carro de compra | 2022-05-18 → 2022-05-25 (+7d) | 2022-05-20 → 2022-05-27 (+7d) |  |  | 6.25d → 0d |  | baseline start none → 2022-05-25; baseline finish none → 2022-05-27 |
| 15 | Pago electrónico | 2022-05-10 → 2022-05-11 (+1d) | 2022-05-17 → 2022-05-18 (+1d) |  |  | 11.25d → 7d |  | baseline start none → 2022-05-11; baseline finish none → 2022-05-18 |
| 16 | Toma del pedido | 2022-05-23 → 2022-05-30 (+7d) | 2022-05-26 → 2022-06-02 (+7d) |  |  | 6.25d → 0d |  | baseline start none → 2022-05-30; baseline finish none → 2022-06-02 |
| 17 | Comprobar historial del pedido | 2022-05-27 → 2022-06-03 (+7d) | 2022-05-31 → 2022-06-07 (+7d) |  |  | 6.25d → 0d |  | baseline start none → 2022-06-03; baseline finish none → 2022-06-07 |
| 18 | Requisitos de datos | 2022-05-18 → 2022-05-25 (+7d) | 2022-05-20 → 2022-05-27 (+7d) |  |  | 15.25d → 7d |  | baseline start none → 2022-05-25; baseline finish none → 2022-05-27 |
| 19 | Requisitos de la interfaz del ERP | 2022-05-23 → 2022-05-30 (+7d) | 2022-05-31 → 2022-06-07 (+7d) |  |  | 6.25d → 0d |  | baseline start none → 2022-05-30; baseline finish none → 2022-06-07 |
| 20 | Requisitos de la Interfaz de Usuario | 2022-05-10 → 2022-05-19 (+9d) | 2022-05-13 → 2022-05-24 (+11d) |  |  | 20.25d → 10d |  | baseline start none → 2022-05-19; baseline finish none → 2022-05-24 |
| 21 | **Diseño detallado** | 2022-06-01 → 2022-06-08 (+7d) | 2022-06-29 → 2022-07-14 (+15d) | 19.75d → 26.5d |  | 6.25d → 0d |  | baseline start none → 2022-06-08; baseline finish none → 2022-07-14 |
| 22 | Diseño de la captura del perfil del cliente | 2022-06-01 → 2022-06-08 (+7d) | 2022-06-09 → 2022-06-27 (+18d) | 6.75d → 13.5d |  | 11.25d → 3d |  | baseline start none → 2022-06-08; baseline finish none → 2022-06-27 |
| 23 | Diseño de la vista y búsqueda del catálogo de productos | 2022-06-01 → 2022-06-08 (+7d) | 2022-06-09 → 2022-06-16 (+7d) |  |  | 6.25d → 0d |  | baseline start none → 2022-06-08; baseline finish none → 2022-06-16 |
| 24 | Diseño del carro de compra | 2022-06-09 → 2022-06-16 (+7d) | 2022-06-14 → 2022-06-30 (+16d) | 3d → 6d |  | 6.25d → 0d |  | baseline start none → 2022-06-16; baseline finish none → 2022-06-30 |
| 25 | Diseño del pago electrónico | 2022-06-01 → 2022-06-08 (+7d) | 2022-06-03 → 2022-06-10 (+7d) |  |  | 15d → 13.5d |  | resources Salvador López (Analista Funcional ); Marcos Francés (Jefe de Desarrollo) → Desarrollador 2 (TBD); Desarrollador 3 (TBD); baseline start none → 2022-06-08; baseline finish none → 2022-06-10 |
| 26 | Diseño de la toma del pedido | 2022-06-14 → 2022-06-30 (+16d) | 2022-06-27 → 2022-07-12 (+15d) |  |  | 8.25d → 8d |  | baseline start none → 2022-06-30; baseline finish none → 2022-07-12 |
| 27 | Diseño de comprobación historial del pedido | 2022-06-27 → 2022-07-12 (+15d) | 2022-06-29 → 2022-07-14 (+15d) |  |  | 8.25d → 12d |  | baseline start none → 2022-07-12; baseline finish none → 2022-07-14 |
| 28 | Diseño lógico y físico del modelo de datos | 2022-06-01 → 2022-06-08 (+7d) | 2022-06-13 → 2022-06-20 (+7d) |  |  | 19d → 13d |  | baseline start none → 2022-06-08; baseline finish none → 2022-06-20 |
| 29 | Diseño de la interfaz del ERP | 2022-06-14 → 2022-06-30 (+16d) | 2022-06-29 → 2022-07-14 (+15d) |  |  | 6.25d → 0d |  | baseline start none → 2022-06-30; baseline finish none → 2022-07-14 |
| 30 | **Plan de pruebas** | 2022-06-01 → 2022-06-08 (+7d) | 2022-07-28 → 2022-08-12 (+15d) | 40.75d → 47.5d |  | 8.25d → 25.5d |  | baseline start none → 2022-06-08; baseline finish none → 2022-08-12 |
| 31 | Establecer los requisitos de las pruebas | 2022-06-01 → 2022-06-08 (+7d) | 2022-06-09 → 2022-06-16 (+7d) |  |  | 21d → 25.5d |  | baseline start none → 2022-06-08; baseline finish none → 2022-06-16 |
| 32 | Crear el plan y los casos de prueba | 2022-06-29 → 2022-07-14 (+15d) | 2022-07-13 → 2022-07-28 (+15d) |  |  | 8.25d → 13d |  | baseline start none → 2022-07-14; baseline finish none → 2022-07-28 |
| 33 | Escribir los códigos de pruebas | 2022-07-13 → 2022-07-28 (+15d) | 2022-07-28 → 2022-08-12 (+15d) |  |  | 8.25d → 54.39d |  | resources Kim Benson (Jefe de Pruebas); Tomás Gómez (Pruebas) → Tomás Gómez (Pruebas); Kim Benson (Jefe de Pruebas); baseline start none → 2022-07-28; baseline finish none → 2022-08-12 |
| 34 | **Infraestructura técnica** | 2022-04-25 → 2022-05-13 (+18d) | 2022-09-30 → 2022-10-05 (+5d) | 113.2d → 104d |  | 13.8d → 4.75d |  | baseline start none → 2022-05-13; baseline finish none → 2022-10-05 |
| 35 | Crear el entorno de desarrollo | 2022-05-12 → 2022-05-13 (+1d) | 2022-06-08 → 2022-06-09 (+1d) |  |  | 13.8d → 4.75d |  | baseline start none → 2022-05-13; baseline finish none → 2022-06-09 |
| 36 | Crear el entorno de pruebas | 2022-06-09 → 2022-06-15 (+6d) | 2022-07-28 → 2022-08-02 (+5d) |  |  | 13.8d → 57.29d |  | baseline start none → 2022-06-15; baseline finish none → 2022-08-02 |
| 37 | Soporte del entorno de desarrollo | 2022-06-09 → 2022-06-10 (+1d) | 2022-06-14 → 2022-06-15 (+1d) |  |  | 90.2d → 15.2d |  | baseline start none → 2022-06-10; baseline finish none → 2022-06-15 |
| 38 | Soporte del entorno de desarrollo y pruebas | 2022-07-28 → 2022-08-03 (+6d) | 2022-09-30 → 2022-10-05 (+5d) |  |  | 13.8d → 15.89d | 36 → 37 | baseline start none → 2022-08-03; baseline finish none → 2022-10-05 |
| 39 | Soporte de bases de datos | 2022-04-25 → 2022-08-03 (+100d) | 2022-04-29 → 2022-08-09 (+102d) |  |  | 122.4d → 57.29d | none → 36 | baseline start none → 2022-08-03; baseline finish none → 2022-08-09 |
| 40 | **Desarrollo y prueba de componentes** | 2022-06-09 → 2022-06-16 (+7d) | 2022-08-01 → 2022-08-16 (+15d) | 36.75d → 42.75d |  | 7d → 0d |  | baseline start none → 2022-06-16; baseline finish none → 2022-08-16 |
| 41 | Construir la captura del perfil del cliente | 2022-06-09 → 2022-06-27 (+18d) | 2022-06-29 → 2022-07-14 (+15d) |  |  | 42.25d → 6d |  | baseline start none → 2022-06-27; baseline finish none → 2022-07-14 |
| 42 | Construir la vista y búsqueda del catálogo de productos | 2022-06-09 → 2022-06-16 (+7d) | 2022-06-28 → 2022-07-04 (+6d) |  |  | 6.25d → 0d |  | baseline start none → 2022-06-16; baseline finish none → 2022-07-04 |
| 43 | Construir el carro de compra | 2022-06-28 → 2022-07-04 (+6d) | 2022-07-07 → 2022-07-13 (+6d) |  |  | 6.25d → 0d |  | resources Desarrollador 3 (TBD) → Sandra Volta (ABD); baseline start none → 2022-07-04; baseline finish none → 2022-07-13 |
| 44 | Construir el pago electrónico | 2022-06-09 → 2022-06-16 (+7d) | 2022-06-16 → 2022-06-24 (+8d) |  |  | 50d → 13d |  | resources Desarrollador 2 (TBD) → Marcos Francés (Jefe de Desarrollo); baseline start none → 2022-06-16; baseline finish none → 2022-06-24 |
| 45 | Construir la toma del pedido | 2022-07-07 → 2022-07-14 (+7d) | 2022-07-25 → 2022-08-01 (+7d) |  |  | 6.25d → 6d |  | baseline start none → 2022-07-14; baseline finish none → 2022-08-01 |
| 46 | Construir la comprobación historial del pedido | 2022-06-29 → 2022-07-14 (+15d) | 2022-07-07 → 2022-07-22 (+15d) |  |  | 48.25d → 12d |  | baseline start none → 2022-07-14; baseline finish none → 2022-07-22 |
| 47 | Construir el modelo de datos lógico y físico | 2022-06-14 → 2022-06-21 (+7d) | 2022-07-06 → 2022-07-21 (+15d) |  |  | 49.5d → 13d |  | baseline start none → 2022-06-21; baseline finish none → 2022-07-21 |
| 48 | Construir la interfaz del ERP | 2022-06-29 → 2022-07-14 (+15d) | 2022-07-25 → 2022-08-09 (+15d) |  |  | 6.25d → 0d |  | baseline start none → 2022-07-14; baseline finish none → 2022-08-09 |
| 49 | Soporte de desarrollo y de las pruebas | 2022-06-29 → 2022-07-14 (+15d) | 2022-08-01 → 2022-08-16 (+15d) |  |  | 57.25d → 52.39d |  | baseline start none → 2022-07-14; baseline finish none → 2022-08-16 |
| 50 | **Pruebas** | 2022-07-07 → 2022-07-22 (+15d) | 2022-09-12 → 2022-09-27 (+15d) |  |  | 6.25d → 0d |  | baseline start none → 2022-07-22; baseline finish none → 2022-09-27 |
| 51 | **Ejecutar pruebas de montaje** | 2022-07-07 → 2022-07-22 (+15d) | 2022-08-01 → 2022-08-16 (+15d) |  |  | 6.25d → 0d |  | baseline start none → 2022-07-22; baseline finish none → 2022-08-16 |
| 52 | Ejecutar pruebas de fase 1 | 2022-07-07 → 2022-07-22 (+15d) | 2022-07-25 → 2022-08-09 (+15d) |  |  | 6.25d → 0d | 41, 42, 43 → 42, 43, 44 | baseline start none → 2022-07-22; baseline finish none → 2022-08-09 |
| 53 | Ejecutar pruebas de fase 2 | 2022-07-25 → 2022-08-09 (+15d) | 2022-08-01 → 2022-08-16 (+15d) |  |  | 6.25d → 0d |  | baseline start none → 2022-08-09; baseline finish none → 2022-08-16 |
| 54 | Ejecutar pruebas del sistema | 2022-08-01 → 2022-08-16 (+15d) | 2022-08-29 → 2022-09-13 (+15d) |  |  | 6.25d → 0d | 32, 33, 51 → 32, 51, 31 | baseline start none → 2022-08-16; baseline finish none → 2022-09-13 |
| 55 | Validar las pruebas | 2022-08-29 → 2022-09-13 (+15d) | 2022-09-12 → 2022-09-27 (+15d) |  |  | 6.25d → 0d |  | baseline start none → 2022-09-13; baseline finish none → 2022-09-27 |
| 56 | **Despliegue** | 2022-09-12 → 2022-09-27 (+15d) | 2022-10-11 → 2022-10-27 (+16d) | 21d → 22.39d |  | 6.25d → 0d |  | baseline start none → 2022-09-27; baseline finish none → 2022-10-27 |
| 57 | Implantación | 2022-09-12 → 2022-09-27 (+15d) | 2022-09-26 → 2022-10-11 (+15d) |  |  | 6.25d → 0d |  | baseline start none → 2022-09-27; baseline finish none → 2022-10-11 |
| 58 | Despliegue a producción | 2022-09-26 → 2022-10-11 (+15d) | 2022-09-27 → 2022-10-12 (+15d) | 1d → 1.14d |  | 6.25d → 0d |  | resources Kim Benson (Jefe de Pruebas); Tomás Gómez (Pruebas); Desarrollador 1 (TBD); Desarrollador 2 (TBD); Desarrollador 3 (TBD); Marcos Francés (Jefe de Desarrollo); Ramón Nori (Jefe Funcional); Salvador López (Analista Funcional ) → Desarrollador 1 (TBD); Desarrollador 2 (TBD); Desarrollador 3 (TBD); Kim Benson (Jefe de Pruebas); Marcos Francés (Jefe de Desarrollo); Ramón Nori (Jefe Funcional); Salvador López (Analista Funcional ); baseline start none → 2022-10-11; baseline finish none → 2022-10-12 |
| 59 | Revisión del proyecto | 2022-09-27 → 2022-10-12 (+15d) | 2022-10-11 → 2022-10-27 (+16d) | 10d → 11.25d |  | 6.25d → 0d |  | resources Kim Benson (Jefe de Pruebas); Tomás Gómez (Pruebas); Marcos Francés (Jefe de Desarrollo); Desarrollador 1 (TBD); Desarrollador 2 (TBD); Desarrollador 3 (TBD); Ramón Nori (Jefe Funcional); Salvador López (Analista Funcional ); Román Blanco (Jefe de Infrastructura) → Desarrollador 1 (TBD); Desarrollador 2 (TBD); Desarrollador 3 (TBD); Kim Benson (Jefe de Pruebas); Marcos Francés (Jefe de Desarrollo); Ramón Nori (Jefe Funcional); Salvador López (Analista Funcional ); Román Blanco (Jefe de Infrastructura); baseline start none → 2022-10-12; baseline finish none → 2022-10-27 |
